# ProjectWBS

Schedule from MS Project, 2025-10-07 to 2025-12-02, costs in $.

## Calendars

- Standard: Mon off; Tue 09:00-15:00; Wed 10:30-13:30; Thu off; Fri 09:00-12:00; Sat-Sun off.

## Resources

| Resource | Rate | Cost per use |
| --- | --- | --- |
| Mitch | 50 |  |
| Adam | 50 |  |
| Liam | 50 |  |
| Bryce | 50 |  |
| Jackson | 50 |  |
| Firewall | 4000 |  |
| Firewall License | 1.44 |  |
| Switch | 4000 |  |
| Cabling ($1.5/meter) | 20 | 1.5 |
| Desktops | 3000 | 1500 |

## Schedule

| ID | WBS | Task | Duration | Start | Finish | Predecessors | Baseline start | Baseline finish | Baseline duration | Total slack | Free slack | Constraint | Resources | Work | Cost | Baseline cost |
| --- | --- | --- | --- | --- | --- | --- | --- | --- | --- | --- | --- | --- | --- | --- | --- | --- |
| 1 | 1 | **Set up Network Devices** | 1.56d | 2025-10-07 09:00 | 2025-10-08 17:00 |  | 2025-10-07 09:00 | 2025-10-08 17:00 | 1.56d |  |  |  |  | 12h | 600 | 600 |
| 2 | 1.1 | IP addresses | 1h | 2025-10-07 09:00 | 2025-10-07 10:00 |  | 2025-10-07 09:00 | 2025-10-07 10:00 | 1h | 11.88d |  | start no earlier than 2025-10-07 08:00 | Liam | 1h | 50 | 50 |
| 3 | 1.2 | **Configure Devices** | 0.88d | 2025-10-07 09:00 | 2025-10-08 11:30 |  | 2025-10-07 09:00 | 2025-10-08 11:30 | 0.88d | 9.62d |  |  |  | 8h | 400 | 400 |
| 4 | 1.2.1 | **Switch** | 0.12d | 2025-10-07 09:00 | 2025-10-07 10:00 |  | 2025-10-07 09:00 | 2025-10-07 10:00 | 0.12d | 10.38d | 0.75d |  | Jackson | 1h | 50 | 50 |
| 5 | 1.2.1.1 | Basic Config | 1h | 2025-10-07 09:00 | 2025-10-07 10:00 |  | 2025-10-07 09:00 | 2025-10-07 10:00 | 1h | 9.75d |  |  |  |  |  |  |
| 6 | 1.2.1.2 | Configure VLANS | 1h | 2025-10-07 09:00 | 2025-10-07 10:00 |  | 2025-10-07 09:00 | 2025-10-07 10:00 | 1h | 9.75d |  |  |  |  |  |  |
| 7 | 1.2.1.3 | Configure Security | 1h | 2025-10-07 09:00 | 2025-10-07 10:00 |  | 2025-10-07 09:00 | 2025-10-07 10:00 | 1h | 9.75d |  |  |  |  |  |  |
| 8 | 1.2.2 | **Firewall** | 0.88d | 2025-10-07 09:00 | 2025-10-08 11:30 |  | 2025-10-07 09:00 | 2025-10-08 11:30 | 0.88d | 9.62d | 0d |  | Mitch | 7h | 350 | 350 |
| 9 | 1.2.2.1 | Static IP | 1h | 2025-10-07 09:00 | 2025-10-07 10:00 |  | 2025-10-07 09:00 | 2025-10-07 10:00 | 1h | 9.75d |  |  |  |  |  |  |
| 10 | 1.2.2.2 | Zones | 1h | 2025-10-07 09:00 | 2025-10-07 10:00 |  | 2025-10-07 09:00 | 2025-10-07 10:00 | 1h | 9.75d |  |  |  |  |  |  |
| 11 | 1.2.2.3 | Defualt route | 1h | 2025-10-07 09:00 | 2025-10-07 10:00 |  | 2025-10-07 09:00 | 2025-10-07 10:00 | 1h | 9.75d |  |  |  |  |  |  |
| 12 | 1.2.2.4 | Timezones | 1h | 2025-10-07 09:00 | 2025-10-07 10:00 |  | 2025-10-07 09:00 | 2025-10-07 10:00 | 1h | 9.75d |  |  |  |  |  |  |
| 13 | 1.2.2.5 | Service Routes | 1h | 2025-10-08 10:30 | 2025-10-08 11:30 |  | 2025-10-08 10:30 | 2025-10-08 11:30 | 1h | 9d |  | start no earlier than 2025-10-08 08:00 |  |  |  |  |
| 14 | 1.2.2.6 | Source NAT from LAN to WAN | 1h | 2025-10-08 10:30 | 2025-10-08 11:30 |  | 2025-10-08 10:30 | 2025-10-08 11:30 | 1h | 9d |  | start no earlier than 2025-10-08 08:00 |  |  |  |  |
| 15 | 1.2.2.7 | Configure Security | 1h | 2025-10-08 10:30 | 2025-10-08 11:30 |  | 2025-10-08 10:30 | 2025-10-08 11:30 | 1h | 9d |  | start no earlier than 2025-10-08 08:00 |  |  |  |  |
| 16 | 1.2.2.8 | DHCP | 1h | 2025-10-08 10:30 | 2025-10-08 11:30 |  | 2025-10-08 10:30 | 2025-10-08 11:30 | 1h | 9d |  | start no earlier than 2025-10-08 08:00 |  |  |  |  |
| 17 | 1.3 | Cabling | 30min | 2025-10-08 10:30 | 2025-10-08 12:00 |  | 2025-10-08 10:30 | 2025-10-08 12:00 | 30min | 11.06d |  | start no earlier than 2025-10-08 08:00 | Adam | 0.5h | 25 | 25 |
| 18 | 1.4 | **Testing** | 0.06d | 2025-10-08 11:30 | 2025-10-08 12:00 | 4, 8 | 2025-10-08 11:30 | 2025-10-08 12:00 | 0.06d | 9.62d |  |  | Adam; Bryce; Jackson; Liam; Mitch | 2.5h | 125 | 125 |
| 19 | 1.4.1 | Internet Connectivity | 20min | 2025-10-08 11:30 | 2025-10-08 11:50 |  | 2025-10-08 11:30 | 2025-10-08 11:50 | 20min | 9.02d |  |  |  |  |  |  |
| 20 | 1.4.2 | Remote Management | 20min | 2025-10-08 11:30 | 2025-10-08 11:50 |  | 2025-10-08 11:30 | 2025-10-08 11:50 | 20min | 9.02d |  |  |  |  |  |  |
| 21 | 1.4.3 | Telnet/SSh | 30min | 2025-10-08 11:30 | 2025-10-08 12:00 |  | 2025-10-08 11:30 | 2025-10-08 12:00 | 30min | 9d |  |  |  |  |  |  |
| 22 | 2 | **Set up Virtual Devices** | 0.38d | 2025-10-10 09:00 | 2025-10-10 12:00 | 1 | 2025-10-10 09:00 | 2025-10-10 12:00 | 0.38d | 9.44d | 0d |  |  | 5h | 250 | 250 |
| 23 | 2.1 | VirtualBox Bridged Network | 1h | 2025-10-10 09:00 | 2025-10-10 10:00 |  | 2025-10-10 09:00 | 2025-10-10 10:00 | 1h | 8.81d | 0d |  | Adam | 1h | 50 | 50 |
| 24 | 2.2 | **Kali Purple** | 0.12d | 2025-10-10 10:00 | 2025-10-10 11:00 | 23 | 2025-10-10 10:00 | 2025-10-10 11:00 | 0.12d | 9.44d | 0d |  | Adam | 1h | 50 | 50 |
| 25 | 2.2.1 | Install | 1h | 2025-10-10 10:00 | 2025-10-10 11:00 |  | 2025-10-10 10:00 | 2025-10-10 11:00 | 1h | 8.81d |  |  |  |  |  |  |
| 26 | 2.2.2 | Test connectivity | 30min | 2025-10-10 10:00 | 2025-10-10 10:30 |  | 2025-10-10 10:00 | 2025-10-10 10:30 | 30min | 8.88d |  |  |  |  |  |  |
| 27 | 2.2.3 | Updates | 30min | 2025-10-10 10:00 | 2025-10-10 10:30 |  | 2025-10-10 10:00 | 2025-10-10 10:30 | 30min | 8.88d |  |  |  |  |  |  |
| 28 | 2.2.4 | Set IP | 30min | 2025-10-10 10:00 | 2025-10-10 10:30 |  | 2025-10-10 10:00 | 2025-10-10 10:30 | 30min | 8.88d |  |  |  |  |  |  |
| 29 | 2.2.5 | Connect to Firewall | 1h | 2025-10-10 10:00 | 2025-10-10 11:00 |  | 2025-10-10 10:00 | 2025-10-10 11:00 | 1h | 8.81d |  |  |  |  |  |  |
| 30 | 2.3 | Install Windows Clients | 2h | 2025-10-10 09:00 | 2025-10-10 11:00 |  | 2025-10-10 09:00 | 2025-10-10 11:00 | 2h | 8.94d |  |  | Liam | 2h | 100 | 100 |

| ID | WBS | Task | Duration | Start | Finish | Predecessors | Baseline start | Baseline finish | Baseline duration | Total slack | Free slack | Resources | Work | Cost | Baseline cost |
| --- | --- | --- | --- | --- | --- | --- | --- | --- | --- | --- | --- | --- | --- | --- | --- |
| 31 | 2.4 | **Windows Server** | 0.12d | 2025-10-10 11:00 | 2025-10-10 12:00 | 24 | 2025-10-10 11:00 | 2025-10-10 12:00 | 0.12d | 9.44d |  | Adam | 1h | 50 | 50 |
| 32 | 2.4.1 | Install Server 2025 | 1h | 2025-10-10 11:00 | 2025-10-10 12:00 |  | 2025-10-10 11:00 | 2025-10-10 12:00 | 1h | 8.81d |  |  |  |  |  |
| 33 | 2.4.2 | Promote to domain controller | 30min | 2025-10-10 11:00 | 2025-10-10 11:30 |  | 2025-10-10 11:00 | 2025-10-10 11:30 | 30min | 8.88d |  |  |  |  |  |
| 34 | 2.4.3 | Create Security Groups and User Accounts | 1h | 2025-10-10 11:00 | 2025-10-10 12:00 |  | 2025-10-10 11:00 | 2025-10-10 12:00 | 1h | 8.81d |  |  |  |  |  |
| 35 | 2.4.4 | Join Windows clients to domain | 1h | 2025-10-10 11:00 | 2025-10-10 12:00 |  | 2025-10-10 11:00 | 2025-10-10 12:00 | 1h | 8.81d |  |  |  |  |  |
| 36 | 2.4.5 | Set up DNS | 30min | 2025-10-10 11:00 | 2025-10-10 11:30 |  | 2025-10-10 11:00 | 2025-10-10 11:30 | 30min | 8.88d |  |  |  |  |  |
| 37 | 3 | Kali Purple Remote Configuration | 30min | 2025-10-14 09:00 | 2025-10-14 09:30 | 22 | 2025-10-14 09:00 | 2025-10-14 09:30 | 30min | 8.81d | 0d |  |  |  |  |
| 38 | 4 | **Ubuntu Server Elastic Security SIEM implementation** | 0.12d | 2025-10-14 09:30 | 2025-10-14 10:30 | 37 | 2025-10-14 09:30 | 2025-10-14 10:30 | 0.12d | 9.44d | 0d | Mitch | 1h | 50 | 50 |
| 39 | 4.1 | Convert to single-node | 1h | 2025-10-14 09:30 | 2025-10-14 10:30 |  | 2025-10-14 09:30 | 2025-10-14 10:30 | 1h | 8.81d |  |  |  |  |  |
| 40 | 4.2 | Install Elasticsearch | 1h | 2025-10-14 09:30 | 2025-10-14 10:30 |  | 2025-10-14 09:30 | 2025-10-14 10:30 | 1h | 8.81d |  |  |  |  |  |
| 41 | 4.3 | **Install Kibana** | 0.06d | 2025-10-14 09:30 | 2025-10-14 10:00 |  | 2025-10-14 09:30 | 2025-10-14 10:00 | 0.06d | 9.5d |  |  |  |  |  |
| 42 | 4.3.1 | Enable HTTPS | 30min | 2025-10-14 09:30 | 2025-10-14 10:00 |  | 2025-10-14 09:30 | 2025-10-14 10:00 | 30min | 8.88d |  |  |  |  |  |
| 43 | 4.3.2 | Generate keys and certificates | 30min | 2025-10-14 09:30 | 2025-10-14 10:00 |  | 2025-10-14 09:30 | 2025-10-14 10:00 | 30min | 8.88d |  |  |  |  |  |
| 44 | 4.4 | Create elastic users | 1h | 2025-10-14 09:30 | 2025-10-14 10:30 |  | 2025-10-14 09:30 | 2025-10-14 10:30 | 1h | 8.81d |  |  |  |  |  |
| 45 | 5 | **Implement Fleet Server and endpoint protection** | 0.25d | 2025-10-14 10:30 | 2025-10-14 12:30 | 38 | 2025-10-14 10:30 | 2025-10-14 12:30 | 0.25d | 9.44d | 0d | Adam; Bryce; Jackson; Liam | 11.5h | 575 | 575 |
| 46 | 5.1 | Overview and planning | 90min | 2025-10-14 10:30 | 2025-10-14 12:00 |  | 2025-10-14 10:30 | 2025-10-14 12:00 | 90min | 8.88d |  |  |  |  |  |
| 47 | 5.2 | **Server installation** | 0.19d | 2025-10-14 10:30 | 2025-10-14 12:00 |  | 2025-10-14 10:30 | 2025-10-14 12:00 | 0.19d | 9.5d |  | Adam | 1.5h | 75 | 75 |
| 48 | 5.2.1 | Install Fleet server agent on Kali Purple | 90min | 2025-10-14 10:30 | 2025-10-14 12:00 |  | 2025-10-14 10:30 | 2025-10-14 12:00 | 90min | 8.88d |  |  |  |  |  |
| 49 | 5.2.2 | Install Fleet to central host | 90min | 2025-10-14 10:30 | 2025-10-14 12:00 |  | 2025-10-14 10:30 | 2025-10-14 12:00 | 90min | 8.88d |  |  |  |  |  |
| 50 | 5.3 | **Elastic Defend integration and Windows endpoint agent** | 0.12d | 2025-10-14 10:30 | 2025-10-14 11:30 |  | 2025-10-14 10:30 | 2025-10-14 11:30 | 0.12d | 9.44d | 0d | Bryce | 1h | 50 | 50 |
| 51 | 5.3.1 | Add Elastic Defend integratiopn | 1h | 2025-10-14 10:30 | 2025-10-14 11:30 |  | 2025-10-14 10:30 | 2025-10-14 11:30 | 1h | 8.81d |  |  |  |  |  |
| 52 | 5.3.2 | Install Elastic on Windows | 30min | 2025-10-14 10:30 | 2025-10-14 11:00 |  | 2025-10-14 10:30 | 2025-10-14 11:00 | 30min | 8.88d |  |  |  |  |  |
| 53 | 5.3.3 | Confirm Enpoint protection is configured | 30min | 2025-10-14 10:30 | 2025-10-14 11:00 |  | 2025-10-14 10:30 | 2025-10-14 11:00 | 30min | 8.88d |  |  |  |  |  |
| 54 | 5.4 | **Configure an Integration policy for Elastic Defend** | 0.12d | 2025-10-14 11:30 | 2025-10-14 12:30 | 50 | 2025-10-14 11:30 | 2025-10-14 12:30 | 0.12d | 9.44d |  | Bryce | 1h | 50 | 50 |
| 55 | 5.4.1 | Policy Settings | 1h | 2025-10-14 11:30 | 2025-10-14 12:30 |  | 2025-10-14 11:30 | 2025-10-14 12:30 | 1h | 8.81d |  |  |  |  |  |
| 56 | 5.4.2 | Register Elastic Security as Anitvirus | 30min | 2025-10-14 11:30 | 2025-10-14 12:00 |  | 2025-10-14 11:30 | 2025-10-14 12:00 | 30min | 8.88d |  |  |  |  |  |

| ID | WBS | Task | Duration | Start | Finish | Predecessors | Baseline start | Baseline finish | Baseline duration | Total slack | Free slack | Resources | Work | Cost | Baseline cost |
| --- | --- | --- | --- | --- | --- | --- | --- | --- | --- | --- | --- | --- | --- | --- | --- |
| 57 | 5.5 | **Set up security** | 0.06d | 2025-10-14 10:30 | 2025-10-14 11:00 |  | 2025-10-14 10:30 | 2025-10-14 11:00 | 0.06d | 9.62d |  |  |  |  |  |
| 58 | 5.5.1 | Rules | 30min | 2025-10-14 10:30 | 2025-10-14 11:00 |  | 2025-10-14 10:30 | 2025-10-14 11:00 | 30min | 9d |  |  |  |  |  |
| 59 | 5.5.2 | Alerts | 30min | 2025-10-14 10:30 | 2025-10-14 11:00 |  | 2025-10-14 10:30 | 2025-10-14 11:00 | 30min | 9d |  |  |  |  |  |
| 60 | 6 | **Integrate Palo Alto Firewall with Kali Purple Elastic Secuirty SIEM** | 0.19d | 2025-10-14 12:30 | 2025-10-14 14:00 | 45 | 2025-10-14 12:30 | 2025-10-14 14:00 | 0.19d | 9.44d | 0d | Mitch | 1.5h | 75 | 75 |
| 61 | 6.1 | **Firewall Settings** | 0.06d | 2025-10-14 12:30 | 2025-10-14 13:00 |  | 2025-10-14 12:30 | 2025-10-14 13:00 | 0.06d | 9.56d |  |  |  |  |  |
| 62 | 6.1.1 | Timezone (Melbourne) | 20min | 2025-10-14 12:30 | 2025-10-14 12:50 |  | 2025-10-14 12:30 | 2025-10-14 12:50 | 20min | 8.96d |  |  |  |  |  |
| 63 | 6.1.2 | Latest AV, app and threat database installed | 30min | 2025-10-14 12:30 | 2025-10-14 13:00 |  | 2025-10-14 12:30 | 2025-10-14 13:00 | 30min | 8.94d |  |  |  |  |  |
| 64 | 6.2 | Create security policy (in to out) | 1h | 2025-10-14 12:30 | 2025-10-14 13:30 |  | 2025-10-14 12:30 | 2025-10-14 13:30 | 1h | 8.88d |  |  |  |  |  |
| 65 | 6.3 | Create source NAT policy (in to out) | 1h | 2025-10-14 12:30 | 2025-10-14 13:30 |  | 2025-10-14 12:30 | 2025-10-14 13:30 | 1h | 8.88d |  |  |  |  |  |
| 66 | 6.4 | **Firewall syslog config** | 0.06d | 2025-10-14 12:30 | 2025-10-14 13:00 |  | 2025-10-14 12:30 | 2025-10-14 13:00 | 0.06d | 9.56d |  |  |  |  |  |
| 67 | 6.4.1 | Service route | 30min | 2025-10-14 12:30 | 2025-10-14 13:00 |  | 2025-10-14 12:30 | 2025-10-14 13:00 | 30min | 8.94d |  |  |  |  |  |
| 68 | 6.4.2 | Syslog server profile | 20min | 2025-10-14 12:30 | 2025-10-14 12:50 |  | 2025-10-14 12:30 | 2025-10-14 12:50 | 20min | 8.96d |  |  |  |  |  |
| 69 | 6.5 | Firewall Elastic integration configuration | 90min | 2025-10-14 12:30 | 2025-10-14 14:00 |  | 2025-10-14 12:30 | 2025-10-14 14:00 | 90min | 8.81d |  |  |  |  |  |
| 70 | 6.6 | Confirm firewall logs are being sent | 30min | 2025-10-14 12:30 | 2025-10-14 13:00 |  | 2025-10-14 12:30 | 2025-10-14 13:00 | 30min | 8.94d |  |  |  |  |  |
| 71 | 6.7 | Display logs in Kibana | 30min | 2025-10-14 12:30 | 2025-10-14 13:00 |  | 2025-10-14 12:30 | 2025-10-14 13:00 | 30min | 8.94d |  |  |  |  |  |
| 72 | 7 | **DMZ Server** | 0.62d | 2025-10-14 14:00 | 2025-10-17 10:00 | 60 | 2025-10-14 14:00 | 2025-10-17 10:00 | 0.62d | 9.06d | 0d | Jackson; Liam; Mitch | 34.33h | 1,716.67 | 1,716.67 |
| 73 | 7.1 | Set up DMZ in NAT network | 1h | 2025-10-14 14:00 | 2025-10-14 15:00 |  | 2025-10-14 14:00 | 2025-10-14 15:00 | 1h | 8.94d |  | Bryce; Jackson; Liam | 3h | 150 | 150 |
| 74 | 7.2 | Set up DMZ in virtual machines | 2h | 2025-10-14 14:00 | 2025-10-15 11:30 |  | 2025-10-14 14:00 | 2025-10-15 11:30 | 2h | 8.81d |  | Bryce; Jackson; Liam | 6h | 300 | 300 |
| 75 | 7.3 | Update Ubuntu DMZ server | 30min | 2025-10-14 14:00 | 2025-10-14 14:30 |  | 2025-10-14 14:00 | 2025-10-14 14:30 | 30min | 9d |  | Bryce; Jackson; Liam | 1.5h | 75 | 75 |
| 76 | 7.4 | **Configure DMZ for production network** | 0.06d | 2025-10-14 14:00 | 2025-10-14 14:30 |  | 2025-10-14 14:00 | 2025-10-14 14:30 | 0.06d | 9.62d |  |  | 1.5h | 75 | 75 |
| 77 | 7.4.1 | Bridge DMZ VM to Ethernet adapter on host | 30min | 2025-10-14 14:00 | 2025-10-14 14:30 |  | 2025-10-14 14:00 | 2025-10-14 14:30 | 30min | 9d |  | Adam | 0.5h | 25 | 25 |
| 78 | 7.4.2 | Firewall-in to DMZ policy | 30min | 2025-10-14 14:00 | 2025-10-14 14:30 |  | 2025-10-14 14:00 | 2025-10-14 14:30 | 30min | 9d |  | Mitch | 0.5h | 25 | 25 |
| 79 | 7.4.3 | Firewall-DMZ to out policy | 30min | 2025-10-14 14:00 | 2025-10-14 14:30 |  | 2025-10-14 14:00 | 2025-10-14 14:30 | 30min | 9d |  | Mitch | 0.5h | 25 | 25 |
| 80 | 7.5 | **Firewall -DMZ server connectivity from internet** | 0.12d | 2025-10-14 14:00 | 2025-10-14 15:00 |  | 2025-10-14 14:00 | 2025-10-14 15:00 | 0.12d | 9.56d |  | Mitch | 1h | 50 | 50 |
| 81 | 7.5.1 | Policy- Outside to DMZ | 1h | 2025-10-14 14:00 | 2025-10-14 15:00 |  | 2025-10-14 14:00 | 2025-10-14 15:00 | 1h | 8.94d |  |  |  |  |  |
| 82 | 7.5.2 | NAT Policy- Destination NAT(out to DMZ) | 30min | 2025-10-14 14:00 | 2025-10-14 14:30 |  | 2025-10-14 14:00 | 2025-10-14 14:30 | 30min | 9d |  |  |  |  |  |
| 83 | 7.6 | Verify Ubuntu DMZ bridged to PAFW | 20min | 2025-10-17 09:00 | 2025-10-17 09:20 |  | 2025-10-17 09:00 | 2025-10-17 09:20 | 20min | 8.52d |  | Bryce; Jackson | 0.67h | 33.33 | 33.33 |
| 84 | 7.7 | DMZ connectivity to Kali Purple | 20min | 2025-10-14 14:00 | 2025-10-14 14:20 |  | 2025-10-14 14:00 | 2025-10-14 14:20 | 20min | 9.02d |  | Adam | 0.33h | 16.67 | 16.67 |

| ID | WBS | Task | Duration | Start | Finish | Predecessors | Baseline start | Baseline finish | Baseline duration | Total slack | Free slack | Resources | Work | Cost | Baseline cost |
| --- | --- | --- | --- | --- | --- | --- | --- | --- | --- | --- | --- | --- | --- | --- | --- |
| 85 | 7.8 | **Install Elastic Defend in DMZ server** | 0.62d | 2025-10-14 14:00 | 2025-10-17 10:00 |  | 2025-10-14 14:00 | 2025-10-17 10:00 | 0.62d | 9.06d |  |  | 1.83h | 91.67 | 91.67 |
| 86 | 7.8.1 | Fleet agent policy - Linux server policy | 30min | 2025-10-14 14:00 | 2025-10-14 14:30 |  | 2025-10-14 14:00 | 2025-10-14 14:30 | 30min | 9d |  | Adam | 0.5h | 25 | 25 |
| 87 | 7.8.2 | Install on Linux server via tar script | 1h | 2025-10-17 09:00 | 2025-10-17 10:00 |  | 2025-10-17 09:00 | 2025-10-17 10:00 | 1h | 8.44d |  | Bryce | 1h | 50 | 50 |
| 88 | 7.8.3 | Confirm Linux DMZ logs are sent to Kibana | 20min | 2025-10-14 14:00 | 2025-10-14 14:20 |  | 2025-10-14 14:00 | 2025-10-14 14:20 | 20min | 9.02d |  | Adam | 0.33h | 16.67 | 16.67 |
| 89 | 7.9 | **DMZ web server remote management testing** | 0.19d | 2025-10-14 14:00 | 2025-10-15 11:00 |  | 2025-10-14 14:00 | 2025-10-15 11:00 | 0.19d | 9.5d |  |  | 3.5h | 175 | 175 |
| 90 | 7.9.1 | XRDP install | 1h | 2025-10-14 14:00 | 2025-10-14 15:00 |  | 2025-10-14 14:00 | 2025-10-14 15:00 | 1h | 8.94d |  | Mitch | 1h | 50 | 50 |
| 91 | 7.9.2 | SSH install | 1h | 2025-10-14 14:00 | 2025-10-14 15:00 |  | 2025-10-14 14:00 | 2025-10-14 15:00 | 1h | 8.94d |  | Liam | 1h | 50 | 50 |
| 92 | 7.9.3 | Test | 90min | 2025-10-14 14:00 | 2025-10-15 11:00 |  | 2025-10-14 14:00 | 2025-10-15 11:00 | 90min | 8.88d |  | Jackson | 1.5h | 75 | 75 |
| 93 | 8 | **Configure and test network** | 0.19d | 2025-10-17 10:00 | 2025-10-17 11:30 | 72 | 2025-10-17 10:00 | 2025-10-17 11:30 | 0.19d | 9.06d | 0d | Adam; Bryce; Jackson; Liam; Mitch | 7.5h | 375 | 375 |
| 94 | 8.1 | Configure and test domain user and computer accounts | 30min | 2025-10-17 10:00 | 2025-10-17 10:30 |  | 2025-10-17 10:00 | 2025-10-17 10:30 | 30min | 8.56d |  |  |  |  |  |
| 95 | 8.2 | Configure and teste domain group policies | 1h | 2025-10-17 10:00 | 2025-10-17 11:00 |  | 2025-10-17 10:00 | 2025-10-17 11:00 | 1h | 8.5d |  |  |  |  |  |
| 96 | 8.3 | Configure and test elastic user accounts and roles | 1h | 2025-10-17 10:00 | 2025-10-17 11:00 |  | 2025-10-17 10:00 | 2025-10-17 11:00 | 1h | 8.5d |  |  |  |  |  |
| 97 | 8.4 | Configure and test management VLAN/host isolation | 90min | 2025-10-17 10:00 | 2025-10-17 11:30 |  | 2025-10-17 10:00 | 2025-10-17 11:30 | 90min | 8.44d |  |  |  |  |  |
| 98 | 8.5 | Configure and test domain DNS forwarding | 1h | 2025-10-17 10:00 | 2025-10-17 11:00 |  | 2025-10-17 10:00 | 2025-10-17 11:00 | 1h | 8.5d |  |  |  |  |  |
| 99 | 9 | **Establish a network security baseline** | 0.25d | 2025-10-17 11:30 | 2025-10-21 10:30 | 93 | 2025-10-17 11:30 | 2025-10-21 10:30 | 0.25d | 9.06d | 0d | Adam | 5h | 250 | 250 |
| 100 | 9.1 | Windows client app control | 30min | 2025-10-17 11:30 | 2025-10-17 12:00 |  | 2025-10-17 11:30 | 2025-10-17 12:00 | 30min | 8.62d |  |  |  |  |  |
| 101 | 9.2 | App patching | 1h | 2025-10-17 11:30 | 2025-10-21 09:30 |  | 2025-10-17 11:30 | 2025-10-21 09:30 | 1h | 8.56d |  |  |  |  |  |
| 102 | 9.3 | Macro settings | 1h | 2025-10-17 11:30 | 2025-10-21 09:30 |  | 2025-10-17 11:30 | 2025-10-21 09:30 | 1h | 8.56d |  |  |  |  |  |
| 103 | 9.4 | App hardening | 30min | 2025-10-17 11:30 | 2025-10-17 12:00 |  | 2025-10-17 11:30 | 2025-10-17 12:00 | 30min | 8.62d |  |  |  |  |  |
| 104 | 9.5 | Restrict admin privileges | 1h | 2025-10-17 11:30 | 2025-10-21 09:30 |  | 2025-10-17 11:30 | 2025-10-21 09:30 | 1h | 8.56d |  |  |  |  |  |
| 105 | 9.6 | Patch OS | 1h | 2025-10-17 11:30 | 2025-10-21 09:30 |  | 2025-10-17 11:30 | 2025-10-21 09:30 | 1h | 8.56d |  |  |  |  |  |
| 106 | 9.7 | MFA | 30min | 2025-10-17 11:30 | 2025-10-17 12:00 |  | 2025-10-17 11:30 | 2025-10-17 12:00 | 30min | 8.62d |  |  |  |  |  |
| 107 | 9.8 | Regular backups | 30min | 2025-10-17 11:30 | 2025-10-17 12:00 |  | 2025-10-17 11:30 | 2025-10-17 12:00 | 30min | 8.62d |  |  |  |  |  |
| 108 | 9.9 | Network segementation and segregation | 2h | 2025-10-17 11:30 | 2025-10-21 10:30 |  | 2025-10-17 11:30 | 2025-10-21 10:30 | 2h | 8.44d |  | Jackson | 2h | 100 | 100 |
| 109 | 9.10 | Firewall security policies/profiles | 1h | 2025-10-17 11:30 | 2025-10-21 09:30 |  | 2025-10-17 11:30 | 2025-10-21 09:30 | 1h | 8.56d |  | Mitch | 1h | 50 | 50 |

| ID | WBS | Task | Duration | Start | Finish | Predecessors | Baseline start | Baseline finish | Baseline duration | Total slack | Constraint | Resources | Work | Cost | Baseline cost |
| --- | --- | --- | --- | --- | --- | --- | --- | --- | --- | --- | --- | --- | --- | --- | --- |
| 110 | 10 | **Testing/RBT** | 0.38d | 2025-10-21 10:30 | 2025-10-21 13:30 | 99 | 2025-10-21 10:30 | 2025-10-21 13:30 | 0.38d | 9.06d |  | Liam; Mitch; Jackson; Bryce | 12h | 600 | 600 |
| 111 | 10.1 | Elastic Security alerts and rules | 30min | 2025-10-21 10:30 | 2025-10-21 11:00 |  | 2025-10-21 10:30 | 2025-10-21 11:00 | 30min | 8.75d |  |  |  |  |  |
| 112 | 10.2 | Enumeration with NMAP | 1h | 2025-10-21 10:30 | 2025-10-21 11:30 |  | 2025-10-21 10:30 | 2025-10-21 11:30 | 1h | 8.69d |  |  |  |  |  |
| 113 | 10.3 | Vulnerability scans | 1h | 2025-10-21 10:30 | 2025-10-21 11:30 |  | 2025-10-21 10:30 | 2025-10-21 11:30 | 1h | 8.69d |  |  |  |  |  |
| 114 | 10.4 | Nikto scan | 1h | 2025-10-21 10:30 | 2025-10-21 11:30 |  | 2025-10-21 10:30 | 2025-10-21 11:30 | 1h | 8.69d |  |  |  |  |  |
| 115 | 10.5 | OWASP ZAP | 1h | 2025-10-21 10:30 | 2025-10-21 11:30 |  | 2025-10-21 10:30 | 2025-10-21 11:30 | 1h | 8.69d |  |  |  |  |  |
| 116 | 10.6 | Reporting | 3h | 2025-10-21 10:30 | 2025-10-21 13:30 |  | 2025-10-21 10:30 | 2025-10-21 13:30 | 3h | 8.44d |  |  |  |  |  |
| 117 | 11 | Presentation | 12d? | 2025-10-07 09:00 | 2025-11-28 12:00 |  | 2025-10-07 09:00 | 2025-11-28 12:00 | 12d? | 0.62d | start no earlier than 2025-10-07 08:00 | Liam; Mitch; Jackson; Adam; Bryce | 480h | 24,000 | 24,000 |
| 118 | 12 | Final Report | 12d? | 2025-10-07 09:00 | 2025-11-28 17:00 |  | 2025-10-07 09:00 | 2025-11-28 17:00 | 12d? | 0.62d | finish no earlier than 2025-11-28 17:00 | Liam; Mitch; Bryce; Jackson; Adam | 480h | 24,000 | 24,000 |
| 119 | 13 | End User Training | 1d? | 2025-11-28 09:00 | 2025-12-02 14:00 |  |  |  |  | 0d | start no earlier than 2025-11-28 08:00 | Adam; Bryce; Jackson; Liam; Mitch | 40h | 2,000 |  |
